# PPR_PROJECT

Schedule from MS Project, 2003-09-03 to 2004-04-28, costs in $, A marks actual dates.

## Calendars

- Standard: Mon-Fri 08:00-12:00, 13:00-17:00; Sat-Sun off. Exceptions (off unless hours are given): 2003-09-13 08:00-12:00, 13:00-17:00.

## Resources

| Resource | Rate |
| --- | --- |
| SYSTEMS ANALYST | 45 |
| COMPUTER PROGRAMMER | 40 |
| TEST PROGRAMMER | 35 |
| TECHNICAL WRITER | 35 |

## Schedule

| ID | WBS | Task | Type | Duration | Start | Finish | Complete | Remaining | Total slack | Constraint | Resources | Work | Actual work | Cost | Actual cost |
| --- | --- | --- | --- | --- | --- | --- | --- | --- | --- | --- | --- | --- | --- | --- | --- |
| 1 | 1 | **PROJECT: SCISEARCH** |  | 171.38d? | 2003-09-03 A | 2004-04-28 | 25% | 128.61d? | 0d |  |  | 749h | 152h | 28,790 | 6,140 |
| 2 | 1.1 | **FALL SEMESTER** |  | 66.38d? | 2003-09-03 A | 2003-12-03 | 72% | 18.72d? | 105d |  |  | 240h | 152h | 9,485 | 6,140 |
| 3 | 1.1.1 | **PPR WORK** |  | 12d? | 2003-09-03 A | 2003-09-17 A | 100% |  |  |  |  | 33h | 33h | 1,335 | 1,335 |
| 4 | 1.1.1.1 | ATTEND CLASS 9/3/2003 |  | 8h | 2003-09-03 A | 2003-09-03 A | 100% |  |  | start no earlier than 2003-09-03 | SYSTEMS ANALYST [37.5%] | 3h | 3h | 135 | 135 |
| 5 | 1.1.1.2 | **INTRO, PROPOSAL, APPROVAL** |  | 4d? | 2003-09-04 A | 2003-09-09 A | 100% |  |  |  |  | 3h | 3h | 135 | 135 |
| 6 | 1.1.1.2.1 | INTRO |  | 2d? | 2003-09-04 A | 2003-09-07 A | 100% |  |  | finish no earlier than 2003-09-07 | SYSTEMS ANALYST [12.5%] | 2h | 2h | 90 | 90 |
| 7 | 1.1.1.2.2 | APPROVAL |  | 2d? | 2003-09-08 A | 2003-09-09 A | 100% |  |  | finish no earlier than 2003-09-09 | SYSTEMS ANALYST [6.2%] | 1h | 1h | 45 | 45 |
| 8 | 1.1.1.3 | ATTEND CLASS 9/10/2003 |  | 1d? | 2003-09-10 A | 2003-09-10 A | 100% |  |  | start no earlier than 2003-09-10 | SYSTEMS ANALYST [37.5%] | 3h | 3h | 135 | 135 |
| 9 | 1.1.1.4 | DESIGN BLOCK DIAGRAM |  | 1.8d? | 2003-09-11 A | 2003-09-12 A | 100% |  |  | start no earlier than 2003-09-11 | SYSTEMS ANALYST [41.7%] | 6h | 6h | 270 | 270 |
| 10 | 1.1.1.5 | WRITE PROJECT PROPOSAL |  | 3d? | 2003-09-13 A | 2003-09-16 A | 100% |  |  | finish no earlier than 2003-09-16 | TECHNICAL WRITER [62.5%] | 15h | 15h | 525 | 525 |
| 11 | 1.1.1.6 | PRESENT PROJECT PROPOSAL |  | 1d? | 2003-09-17 A | 2003-09-17 A | 100% |  |  | start no earlier than 2003-09-17 | SYSTEMS ANALYST [37.5%] | 3h | 3h | 135 | 135 |
| 12 | 1.1.1.7 | PPR | milestone | 0d | 2003-09-17 A | 2003-09-17 A | 100% |  |  | start no earlier than 2003-09-17 |  |  |  |  |  |
| 13 | 1.1.2 | **PDR WORK** |  | 11d? | 2003-09-23 A | 2003-10-08 A | 100% |  |  |  |  | 49h | 49h | 1,905 | 1,905 |
| 14 | 1.1.2.1 | EXTEND BLOCK DIAGRAM DESIGN (INTERFACE) |  | 0.62d? | 2003-09-23 A | 2003-09-23 A | 100% |  |  | finish no earlier than 2003-09-23 | SYSTEMS ANALYST | 5h | 5h | 225 | 225 |
| 15 | 1.1.2.2 | ATTEND CLASS 9/24/2003 |  | 1d? | 2003-09-24 A | 2003-09-24 A | 100% |  |  | start no earlier than 2003-09-24 | SYSTEMS ANALYST [37.5%] | 3h | 3h | 135 | 135 |
| 16 | 1.1.2.3 | EXTEND BLOCK DIAGRAM DESIGN (SIMULATION) |  | 2d? | 2003-09-25 A | 2003-09-26 A | 100% |  |  | finish no earlier than 2003-09-26 | SYSTEMS ANALYST [31.2%] | 5h | 5h | 225 | 225 |
| 17 | 1.1.2.4 | ATTEND CLASS 10/1/2003 |  | 1d? | 2003-10-01 A | 2003-10-01 A | 100% |  |  | start no earlier than 2003-10-01 | SYSTEMS ANALYST [37.5%] | 3h | 3h | 135 | 135 |
| 18 | 1.1.2.5 | PREPARE PDR |  | 3.75d? | 2003-10-02 A | 2003-10-07 A | 100% |  |  | finish no earlier than 2003-10-07 | TECHNICAL WRITER | 30h | 30h | 1,050 | 1,050 |
| 19 | 1.1.2.6 | PRESENT PDR |  | 0.38d? | 2003-10-08 A | 2003-10-08 A | 100% |  |  | start no earlier than 2003-10-08 | SYSTEMS ANALYST | 3h | 3h | 135 | 135 |
| 20 | 1.1.2.7 | PDR | milestone | 0d | 2003-10-08 A | 2003-10-08 A | 100% |  |  | start no earlier than 2003-10-08 |  |  |  |  |  |
| 21 | 1.1.3 | **CDR WORK** |  | 15.38d? | 2003-10-15 A | 2003-11-05 A | 100% |  |  |  |  | 70h | 70h | 2,900 | 2,900 |
| 22 | 1.1.3.1 | ATTEND CLASS 10/15/2003 |  | 1d? | 2003-10-15 A | 2003-10-15 A | 100% |  |  | start no earlier than 2003-10-15 | SYSTEMS ANALYST [37.5%] | 3h | 3h | 135 | 135 |
| 23 | 1.1.3.2 | FINALIZE ALGORITHMS |  | 1.5d? | 2003-10-16 A | 2003-10-17 A | 100% |  |  | finish no earlier than 2003-10-17 | SYSTEMS ANALYST | 12h | 12h | 540 | 540 |
| 24 | 1.1.3.3 | ATTEND CLASS 10/22/2003 |  | 1d? | 2003-10-22 A | 2003-10-22 A | 100% |  |  | start no earlier than 2003-10-22 | SYSTEMS ANALYST [37.5%] | 3h | 3h | 135 | 135 |

| ID | WBS | Task | Type | Duration | Start | Finish | Complete | Total slack | Constraint | Resources | Work | Actual work | Cost | Actual cost |
| --- | --- | --- | --- | --- | --- | --- | --- | --- | --- | --- | --- | --- | --- | --- |
| 25 | 1.1.3.4 | **DESIGN PDL** |  | 4.75d? | 2003-10-22 A | 2003-10-28 A | 100% |  |  |  | 26h | 26h | 1,120 | 1,120 |
| 26 | 1.1.3.4.1 | DISPLAY |  | 0.75d? | 2003-10-22 A | 2003-10-22 A | 100% |  | finish no earlier than 2003-10-22 | SYSTEMS ANALYST | 6h | 6h | 270 | 270 |
| 27 | 1.1.3.4.2 | INTERFACE |  | 1.25d? | 2003-10-23 A | 2003-10-24 A | 100% |  | finish no earlier than 2003-10-24 | SYSTEMS ANALYST | 10h | 10h | 450 | 450 |
| 28 | 1.1.3.4.3 | SIMULATION |  | 1.25d? | 2003-10-27 A | 2003-10-28 A | 100% |  | finish no earlier than 2003-10-28 | COMPUTER PROGRAMMER | 10h | 10h | 400 | 400 |
| 29 | 1.1.3.5 | ATTEND CLASS 10/29/2003 |  | 1d? | 2003-10-29 A | 2003-10-29 A | 100% |  | start no earlier than 2003-10-29 | SYSTEMS ANALYST [37.5%] | 3h | 3h | 135 | 135 |
| 30 | 1.1.3.6 | PREPARE CDR |  | 2.5d? | 2003-10-31 A | 2003-11-04 A | 100% |  | finish no earlier than 2003-11-04 | TECHNICAL WRITER | 20h | 20h | 700 | 700 |
| 31 | 1.1.3.7 | PRESENT CDR |  | 0.38d? | 2003-11-05 A | 2003-11-05 A | 100% |  | start no earlier than 2003-11-05 | SYSTEMS ANALYST | 3h | 3h | 135 | 135 |
| 32 | 1.1.3.8 | CDR | milestone | 0d | 2003-11-05 A | 2003-11-05 A | 100% |  | start no earlier than 2003-11-05 |  |  |  |  |  |
| 33 | 1.1.4 | **FDR WORK** |  | 16.38d? | 2003-11-11 | 2003-12-03 |  | 105d |  |  | 88h |  | 3,345 |  |
| 34 | 1.1.4.1 | ATTEND CLASS 11/12/2003 |  | 1d? | 2003-11-11 | 2003-11-11 |  | 120.38d | start no earlier than 2003-11-11 | SYSTEMS ANALYST [37.5%] | 3h |  | 135 |  |
| 35 | 1.1.4.2 | WRITE DISPLAY MODULE - GROUND |  | 1.88d? | 2003-11-18 | 2003-11-19 |  | 114.38d | finish no earlier than 2003-11-19 | COMPUTER PROGRAMMER | 15h |  | 600 |  |
| 36 | 1.1.4.3 | ATTEND CLASS 11/19/2003 |  | 1d? | 2003-11-19 | 2003-11-19 |  | 114.38d | start no earlier than 2003-11-19 | SYSTEMS ANALYST [37.5%] | 3h |  | 135 |  |
| 37 | 1.1.4.4 | WRITE DISPLAY MODULE - OBJECTS |  | 2.5d? | 2003-11-20 | 2003-11-24 |  | 111.38d | finish no earlier than 2003-11-24 | COMPUTER PROGRAMMER | 20h |  | 800 |  |
| 38 | 1.1.4.5 | TEST DISPLAY MODULE |  | 3d? | 2003-11-25 | 2003-11-27 |  | 108.38d | finish no earlier than 2003-11-27 | TEST PROGRAMMER | 24h |  | 840 |  |
| 39 | 1.1.4.6 | PREPARE FDR |  | 2.5d? | 2003-11-28 | 2003-12-02 |  | 105.38d | finish no earlier than 2003-12-02 | TECHNICAL WRITER | 20h |  | 700 |  |
| 40 | 1.1.4.7 | PRESENT FDR |  | 0.38d? | 2003-12-03 | 2003-12-03 |  | 105d | start no earlier than 2003-12-03 | SYSTEMS ANALYST | 3h |  | 135 |  |
| 41 | 1.1.4.8 | FDR | milestone | 0d | 2003-12-03 | 2003-12-03 |  | 105.38d | start no earlier than 2003-12-03 |  |  |  |  |  |
| 42 | 1.2 | **WINTER BREAK** |  | 28.25d? | 2003-12-05 | 2004-01-14 |  | 74.38d |  |  | 121h |  | 4,760 |  |
| 43 | 1.2.1 | **BUILD & TEST PHASE 1 (WINTER BREAK)** |  | 28.25d? | 2003-12-05 | 2004-01-14 |  | 74.38d |  |  | 121h |  | 4,760 |  |
| 44 | 1.2.1.1 | CHECK PARTS |  | 0.25d? | 2003-12-05 | 2003-12-05 |  | 102.38d | finish no earlier than 2003-12-05 | SYSTEMS ANALYST | 2h |  | 90 |  |
| 45 | 1.2.1.2 | WRITE DISPLAY MODULE - NPC, INTERFACE |  | 6.88d? | 2003-12-16 | 2003-12-24 |  | 89.38d | finish no earlier than 2003-12-24 | COMPUTER PROGRAMMER | 55h |  | 2,200 |  |
| 46 | 1.2.1.3 | TEST DISPLAY MODULE |  | 1d? | 2003-12-26 | 2003-12-26 |  | 87.38d | finish no earlier than 2003-12-26 | TEST PROGRAMMER | 8h |  | 280 |  |
| 47 | 1.2.1.4 | WRITE INTERFACE MODULE |  | 4.25d? | 2004-01-02 | 2004-01-08 |  | 78.38d | finish no earlier than 2004-01-08 | COMPUTER PROGRAMMER | 34h |  | 1,360 |  |
| 48 | 1.2.1.5 | TEST INTERFACE MODULE |  | 1.25d? | 2004-01-09 | 2004-01-12 |  | 77.12d | start no earlier than 2004-01-09 | TEST PROGRAMMER | 10h |  | 350 |  |
| 49 | 1.2.1.6 | INTEGRATE DISPLAY AND INTERFACE MODULES |  | 3d? | 2004-01-12 | 2004-01-14 |  | 74.38d | finish no earlier than 2004-01-14 | COMPUTER PROGRAMMER [50%] | 12h |  | 480 |  |

| ID | WBS | Task | Type | Duration | Start | Finish | Total slack | Constraint | Resources | Work | Cost |
| --- | --- | --- | --- | --- | --- | --- | --- | --- | --- | --- | --- |
| 50 | 1.3 | **SPRING SEMESTER** |  | 75.38d? | 2004-01-14 | 2004-04-28 | 0d |  |  | 388h | 14,545 |
| 51 | 1.3.1 | **BUILD & TEST PHASE 1 (SPRING)** |  | 5.38d? | 2004-01-14 | 2004-01-21 | 70d |  |  | 44h | 1,705 |
| 52 | 1.3.1.1 | ATTEND CLASS 1/14/2004 |  | 1d? | 2004-01-14 | 2004-01-14 | 74.38d | finish no earlier than 2004-01-14 | SYSTEMS ANALYST [37.5%] | 3h | 135 |
| 53 | 1.3.1.2 | INTEGRATE DISPLAY AND INTERFACE MODULES |  | 3d? | 2004-01-14 | 2004-01-16 | 72.38d | finish no earlier than 2004-01-16 | COMPUTER PROGRAMMER [62.5%] | 15h | 600 |
| 54 | 1.3.1.3 | PREPARE P.R. #1 |  | 2.5d? | 2004-01-16 | 2004-01-20 | 70.38d | finish no earlier than 2004-01-20 | TECHNICAL WRITER | 20h | 700 |
| 55 | 1.3.1.4 | P.R. #1 - DATE1 |  | 0.38d? | 2004-01-21 | 2004-01-21 | 70d | start no earlier than 2004-01-21 | SYSTEMS ANALYST | 3h | 135 |
| 56 | 1.3.1.5 | P.R. #1 - DATE2 |  | 0.38d? | 2004-01-21 | 2004-01-21 | 70d | start no earlier than 2004-01-21 | SYSTEMS ANALYST | 3h | 135 |
| 57 | 1.3.1.6 | P.R. #1 | milestone | 0d | 2004-01-21 | 2004-01-21 | 70.38d | start no earlier than 2004-01-21 |  |  |  |
| 58 | 1.3.2 | **BUILD AND TEST - PHASE 2** |  | 31.25d? | 2004-01-27 | 2004-03-10 | 35d |  |  | 174h | 6,770 |
| 59 | 1.3.2.1 | WRITE SIMULATION MODULE |  | 1.88d? | 2004-01-27 | 2004-01-28 | 64.38d | finish no earlier than 2004-01-28 | COMPUTER PROGRAMMER | 15h | 600 |
| 60 | 1.3.2.2 | ATTEND CLASS 1/28/2004 |  | 1d? | 2004-01-28 | 2004-01-28 | 64.38d | start no earlier than 2004-01-28 | SYSTEMS ANALYST [37.5%] | 3h | 135 |
| 61 | 1.3.2.3 | WRITE SIMULATION MODULE |  | 5d? | 2004-01-29 | 2004-02-04 | 59.38d | finish no earlier than 2004-02-04 | COMPUTER PROGRAMMER [37.5%] | 15h | 600 |
| 62 | 1.3.2.4 | ATTEND CLASS 2/4/2004 |  | 1d? | 2004-02-04 | 2004-02-04 | 59.38d | start no earlier than 2004-02-04 | SYSTEMS ANALYST [37.5%] | 3h | 135 |
| 63 | 1.3.2.5 | WRITE SIMULATION MODULE |  | 3d? | 2004-02-04 | 2004-02-08 | 57.38d | finish no earlier than 2004-02-08 | SYSTEMS ANALYST [12.5%] | 3h | 135 |
| 64 | 1.3.2.6 | TEST SIMULATION MODULE |  | 2d? | 2004-02-09 | 2004-02-10 | 55.38d | finish no earlier than 2004-02-10 | TEST PROGRAMMER | 16h | 560 |
| 65 | 1.3.2.7 | INTEGRATE SIMULATION MODULE |  | 2d? | 2004-02-10 | 2004-02-11 | 54.38d | finish no earlier than 2004-02-11 | COMPUTER PROGRAMMER [62.5%] | 10h | 400 |
| 66 | 1.3.2.8 | ATTEND CLASS 2/11/2004 |  | 1d? | 2004-02-11 | 2004-02-11 | 54.38d | start no earlier than 2004-02-11 | SYSTEMS ANALYST [37.5%] | 3h | 135 |
| 67 | 1.3.2.9 | INTEGRATE SIMULATION MODULE |  | 3d? | 2004-02-11 | 2004-02-13 | 52.38d | finish no earlier than 2004-02-13 | COMPUTER PROGRAMMER [41.7%] | 10h | 400 |
| 68 | 1.3.2.10 | PREPARE P.R. #2 |  | 1.88d? | 2004-02-16 | 2004-02-17 | 50.38d | finish no earlier than 2004-02-17 | TECHNICAL WRITER | 15h | 525 |
| 69 | 1.3.2.11 | PRESENT P.R. #2 - DATE1 |  | 0.38d? | 2004-02-18 | 2004-02-18 | 50d | start no earlier than 2004-02-18 | SYSTEMS ANALYST | 3h | 135 |
| 70 | 1.3.2.12 | P.R. #2 | milestone | 0d | 2004-02-18 | 2004-02-18 | 50.38d | start no earlier than 2004-02-18 |  |  |  |
| 71 | 1.3.2.13 | **FINALIZE SOFTWARE** |  | 6d? | 2004-02-18 | 2004-02-25 | 44.38d |  |  | 26h | 1,055 |
| 72 | 1.3.2.13.1 | FINISH INTEGRATING SIMULATION MODULE |  | 3d? | 2004-02-18 | 2004-02-20 | 47.38d | finish no earlier than 2004-02-20 | COMPUTER PROGRAMMER [33.3%] | 8h | 320 |
| 73 | 1.3.2.13.2 | PREPARE GRAPHICS |  | 1.88d? | 2004-02-20 | 2004-02-23 | 46.5d | start no earlier than 2004-02-20 | COMPUTER PROGRAMMER | 15h | 600 |
| 74 | 1.3.2.13.3 | ATTEND CLASS 2/25/2003 |  | 1d? | 2004-02-25 | 2004-02-25 | 44.38d | start no earlier than 2004-02-25 | SYSTEMS ANALYST [37.5%] | 3h | 135 |
| 75 | 1.3.2.14 | TEST SOFTWARE |  | 2d? | 2004-03-02 | 2004-03-03 | 39.38d | finish no earlier than 2004-03-03 | TEST PROGRAMMER | 16h | 560 |
| 76 | 1.3.2.15 | ATTEND CLASS 3/3/2004 |  | 1d? | 2004-03-03 | 2004-03-03 | 39.38d | start no earlier than 2004-03-03 | SYSTEMS ANALYST [37.5%] | 3h | 135 |
| 77 | 1.3.2.16 | FINAL INTEGRATION |  | 1.88d? | 2004-03-04 | 2004-03-05 | 37.38d | finish no earlier than 2004-03-05 | COMPUTER PROGRAMMER | 15h | 600 |
| 78 | 1.3.2.17 | PREPARE P.R. #3 |  | 1.88d? | 2004-03-08 | 2004-03-09 | 35.38d | finish no earlier than 2004-03-09 | TECHNICAL WRITER | 15h | 525 |
| 79 | 1.3.2.18 | PRESENT P.R. #3 - DATE1 |  | 0.38d? | 2004-03-10 | 2004-03-10 | 35d | start no earlier than 2004-03-10 | SYSTEMS ANALYST | 3h | 135 |
| 80 | 1.3.2.19 | P.R. #3 | milestone | 0d | 2004-03-10 | 2004-03-10 | 35.38d | start no earlier than 2004-03-10 |  |  |  |

| ID | WBS | Task | Type | Duration | Start | Finish | Total slack | Constraint | Resources | Work | Cost |
| --- | --- | --- | --- | --- | --- | --- | --- | --- | --- | --- | --- |
| 81 | 1.3.3 | **TEST, INTEGRATE & DOCUMENT PHASE** |  | 13.62d? | 2004-03-11 | 2004-03-31 | 20d |  |  | 105h | 3,735 |
| 82 | 1.3.3.1 | TEST SYSTEM AGAIN |  | 1.25d? | 2004-03-11 | 2004-03-12 | 32.38d | finish no earlier than 2004-03-12 | TEST PROGRAMMER | 10h | 350 |
| 83 | 1.3.3.2 | DOCUMENT PLATFORM |  | 3.12d? | 2004-03-12 | 2004-03-17 | 29.38d | finish no earlier than 2004-03-17 | TECHNICAL WRITER | 25h | 875 |
| 84 | 1.3.3.3 | DOCUMENT SOFTWARE |  | 3.12d? | 2004-03-17 | 2004-03-22 | 27.25d | start no earlier than 2004-03-17 | TECHNICAL WRITER | 25h | 875 |
| 85 | 1.3.3.4 | PREPARE USER MANUAL |  | 3d? | 2004-03-19 | 2004-03-23 | 25.38d | start no earlier than 2004-03-19 | TECHNICAL WRITER | 24h | 840 |
| 86 | 1.3.3.5 | ATTEND CLASS 3/24/2004 |  | 1d? | 2004-03-24 | 2004-03-24 | 24.38d | start no earlier than 2004-03-24 | SYSTEMS ANALYST [37.5%] | 3h | 135 |
| 87 | 1.3.3.6 | PREPARE P.R. #4 |  | 1.88d? | 2004-03-29 | 2004-03-30 | 20.38d | finish no earlier than 2004-03-30 | TECHNICAL WRITER | 15h | 525 |
| 88 | 1.3.3.7 | PRESENT P.R. #4 - DATE1 |  | 0.38d? | 2004-03-31 | 2004-03-31 | 20d | start no earlier than 2004-03-31 | SYSTEMS ANALYST | 3h | 135 |
| 89 | 1.3.3.8 | P.R. #4 | milestone | 0d | 2004-03-31 | 2004-03-31 | 20.38d | start no earlier than 2004-03-31 |  |  |  |
| 90 | 1.3.4 | **FINAL REVIEW PHASE** |  | 18.25d? | 2004-04-02 | 2004-04-28 | 0d |  |  | 65h | 2,335 |
| 91 | 1.3.4.1 | FINAL TEST OF SYSTEM |  | 1.88d? | 2004-04-02 | 2004-04-05 | 16.38d | finish no earlier than 2004-04-05 | TEST PROGRAMMER | 15h | 525 |
| 92 | 1.3.4.2 | ATTEND CLASS 4/7/2004 |  | 1d? | 2004-04-07 | 2004-04-07 | 14.38d | start no earlier than 2004-04-07 | SYSTEMS ANALYST [37.5%] | 3h | 135 |
| 93 | 1.3.4.3 | DOCUMENT SYSTEM |  | 3d? | 2004-04-07 | 2004-04-09 | 12.38d | start no earlier than 2004-04-07 | TECHNICAL WRITER | 24h | 840 |
| 94 | 1.3.4.4 | PREPARE FINAL REPORT |  | 2.5d? | 2004-04-16 | 2004-04-20 | 5.38d | finish no earlier than 2004-04-20 | TECHNICAL WRITER | 20h | 700 |
| 95 | 1.3.4.5 | PRESENT FINAL REVIEW - DATE1 |  | 0.38d? | 2004-04-28 | 2004-04-28 | 0d | start no earlier than 2004-04-28 | SYSTEMS ANALYST | 3h | 135 |
| 96 | 1.3.4.6 | FINAL REVIEW | milestone | 0d | 2004-04-28 | 2004-04-28 | 0.38d | start no earlier than 2004-04-28 |  |  |  |
