# PPR_PROJECT

Schedule from MS Project, 2003-09-03 to 2004-04-21, costs in $, A marks actual dates.

## Calendars

- Standard: Mon-Fri 08:00-12:00, 13:00-17:00; Sat-Sun off. Exceptions (off unless hours are given): 2003-09-13 08:00-12:00, 13:00-17:00, 2004-02-28 to 2004-02-29 08:00-12:00, 13:00-17:00.

## Resources

| Resource | Rate |
| --- | --- |
| SYSTEMS ANALYST | 45 |
| COMPUTER PROGRAMMER | 40 |
| TEST PROGRAMMER | 35 |
| TECHNICAL WRITER | 35 |

## Schedule

| ID | WBS | Task | Type | Duration | Start | Finish | Complete | Remaining | Total slack | Constraint | Resources | Work | Actual work | Cost | Actual cost |
| --- | --- | --- | --- | --- | --- | --- | --- | --- | --- | --- | --- | --- | --- | --- | --- |
| 1 | 1 | **PROJECT: SCISEARCH** |  | 168.38d? | 2003-09-03 A | 2004-04-21 | 46% | 90.85d? | 0d |  |  | 601h | 260h | 23,475 | 10,225 |
| 2 | 1.1 | **FALL SEMESTER** |  | 67d? | 2003-09-03 A | 2003-12-03 A | 100% |  |  |  |  | 260h | 260h | 10,225 | 10,225 |
| 3 | 1.1.1 | **PPR WORK** |  | 12d? | 2003-09-03 A | 2003-09-17 A | 100% |  |  |  |  | 33h | 33h | 1,335 | 1,335 |
| 4 | 1.1.1.1 | ATTEND CLASS 9/3/2003 |  | 8h | 2003-09-03 A | 2003-09-03 A | 100% |  |  | start no earlier than 2003-09-03 | SYSTEMS ANALYST [37.5%] | 3h | 3h | 135 | 135 |
| 5 | 1.1.1.2 | **INTRO, PROPOSAL, APPROVAL** |  | 4d? | 2003-09-04 A | 2003-09-09 A | 100% |  |  |  |  | 3h | 3h | 135 | 135 |
| 6 | 1.1.1.2.1 | INTRO |  | 2d? | 2003-09-04 A | 2003-09-05 A | 100% |  |  | finish no earlier than 2003-09-07 | SYSTEMS ANALYST [12.5%] | 2h | 2h | 90 | 90 |
| 7 | 1.1.1.2.2 | APPROVAL |  | 2d? | 2003-09-08 A | 2003-09-09 A | 100% |  |  | finish no earlier than 2003-09-09 | SYSTEMS ANALYST [6.2%] | 1h | 1h | 45 | 45 |
| 8 | 1.1.1.3 | ATTEND CLASS 9/10/2003 |  | 1d? | 2003-09-10 A | 2003-09-10 A | 100% |  |  | start no earlier than 2003-09-10 | SYSTEMS ANALYST [37.5%] | 3h | 3h | 135 | 135 |
| 9 | 1.1.1.4 | DESIGN BLOCK DIAGRAM |  | 1.8d? | 2003-09-11 A | 2003-09-12 A | 100% |  |  | start no earlier than 2003-09-11 | SYSTEMS ANALYST [41.7%] | 6h | 6h | 270 | 270 |
| 10 | 1.1.1.5 | WRITE PROJECT PROPOSAL |  | 3d? | 2003-09-13 A | 2003-09-16 A | 100% |  |  | finish no earlier than 2003-09-16 | TECHNICAL WRITER [62.5%] | 15h | 15h | 525 | 525 |
| 11 | 1.1.1.6 | PRESENT PROJECT PROPOSAL |  | 1d? | 2003-09-17 A | 2003-09-17 A | 100% |  |  | start no earlier than 2003-09-17 | SYSTEMS ANALYST [37.5%] | 3h | 3h | 135 | 135 |
| 12 | 1.1.1.7 | PPR | milestone | 0d | 2003-09-17 A | 2003-09-17 A | 100% |  |  | start no earlier than 2003-09-17 |  |  |  |  |  |
| 13 | 1.1.2 | **PDR WORK** |  | 11d? | 2003-09-23 A | 2003-10-08 A | 100% |  |  |  |  | 49h | 49h | 1,905 | 1,905 |
| 14 | 1.1.2.1 | EXTEND BLOCK DIAGRAM DESIGN (INTERFACE) |  | 0.62d? | 2003-09-23 A | 2003-09-23 A | 100% |  |  | finish no earlier than 2003-09-23 | SYSTEMS ANALYST | 5h | 5h | 225 | 225 |
| 15 | 1.1.2.2 | ATTEND CLASS 9/24/2003 |  | 1d? | 2003-09-24 A | 2003-09-24 A | 100% |  |  | start no earlier than 2003-09-24 | SYSTEMS ANALYST [37.5%] | 3h | 3h | 135 | 135 |
| 16 | 1.1.2.3 | EXTEND BLOCK DIAGRAM DESIGN (SIMULATION) |  | 2d? | 2003-09-25 A | 2003-09-26 A | 100% |  |  | finish no earlier than 2003-09-26 | SYSTEMS ANALYST [31.2%] | 5h | 5h | 225 | 225 |
| 17 | 1.1.2.4 | ATTEND CLASS 10/1/2003 |  | 1d? | 2003-10-01 A | 2003-10-01 A | 100% |  |  | start no earlier than 2003-10-01 | SYSTEMS ANALYST [37.5%] | 3h | 3h | 135 | 135 |
| 18 | 1.1.2.5 | PREPARE PDR |  | 3.75d? | 2003-10-02 A | 2003-10-07 A | 100% |  |  | finish no earlier than 2003-10-07 | TECHNICAL WRITER | 30h | 30h | 1,050 | 1,050 |
| 19 | 1.1.2.6 | PRESENT PDR |  | 0.38d? | 2003-10-08 A | 2003-10-08 A | 100% |  |  | start no earlier than 2003-10-08 | SYSTEMS ANALYST | 3h | 3h | 135 | 135 |
| 20 | 1.1.2.7 | PDR | milestone | 0d | 2003-10-08 A | 2003-10-08 A | 100% |  |  | start no earlier than 2003-10-08 |  |  |  |  |  |
| 21 | 1.1.3 | **CDR WORK** |  | 15.38d? | 2003-10-15 A | 2003-11-05 A | 100% |  |  |  |  | 70h | 70h | 2,900 | 2,900 |
| 22 | 1.1.3.1 | ATTEND CLASS 10/15/2003 |  | 1d? | 2003-10-15 A | 2003-10-15 A | 100% |  |  | start no earlier than 2003-10-15 | SYSTEMS ANALYST [37.5%] | 3h | 3h | 135 | 135 |
| 23 | 1.1.3.2 | FINALIZE ALGORITHMS |  | 1.5d? | 2003-10-16 A | 2003-10-17 A | 100% |  |  | finish no earlier than 2003-10-17 | SYSTEMS ANALYST | 12h | 12h | 540 | 540 |
| 24 | 1.1.3.3 | ATTEND CLASS 10/22/2003 |  | 1d? | 2003-10-22 A | 2003-10-22 A | 100% |  |  | start no earlier than 2003-10-22 | SYSTEMS ANALYST [37.5%] | 3h | 3h | 135 | 135 |

| ID | WBS | Task | Type | Duration | Start | Finish | Complete | Constraint | Resources | Work | Actual work | Cost | Actual cost |
| --- | --- | --- | --- | --- | --- | --- | --- | --- | --- | --- | --- | --- | --- |
| 25 | 1.1.3.4 | **DESIGN PDL** |  | 4.75d? | 2003-10-22 A | 2003-10-28 A | 100% |  |  | 26h | 26h | 1,120 | 1,120 |
| 26 | 1.1.3.4.1 | DISPLAY |  | 0.75d? | 2003-10-22 A | 2003-10-22 A | 100% | finish no earlier than 2003-10-22 | SYSTEMS ANALYST | 6h | 6h | 270 | 270 |
| 27 | 1.1.3.4.2 | INTERFACE |  | 1.25d? | 2003-10-23 A | 2003-10-24 A | 100% | finish no earlier than 2003-10-24 | SYSTEMS ANALYST | 10h | 10h | 450 | 450 |
| 28 | 1.1.3.4.3 | SIMULATION |  | 1.25d? | 2003-10-27 A | 2003-10-28 A | 100% | finish no earlier than 2003-10-28 | COMPUTER PROGRAMMER | 10h | 10h | 400 | 400 |
| 29 | 1.1.3.5 | ATTEND CLASS 10/29/2003 |  | 1d? | 2003-10-29 A | 2003-10-29 A | 100% | start no earlier than 2003-10-29 | SYSTEMS ANALYST [37.5%] | 3h | 3h | 135 | 135 |
| 30 | 1.1.3.6 | PREPARE CDR |  | 2.5d? | 2003-10-31 A | 2003-11-04 A | 100% | finish no earlier than 2003-11-04 | TECHNICAL WRITER | 20h | 20h | 700 | 700 |
| 31 | 1.1.3.7 | PRESENT CDR |  | 0.38d? | 2003-11-05 A | 2003-11-05 A | 100% | start no earlier than 2003-11-05 | SYSTEMS ANALYST | 3h | 3h | 135 | 135 |
| 32 | 1.1.3.8 | CDR | milestone | 0d | 2003-11-05 A | 2003-11-05 A | 100% | start no earlier than 2003-11-05 |  |  |  |  |  |
| 33 | 1.1.4 | **FDR WORK** |  | 17d? | 2003-11-11 A | 2003-12-03 A | 100% |  |  | 108h | 108h | 4,085 | 4,085 |
| 34 | 1.1.4.1 | ATTEND CLASS 11/12/2003 |  | 1d? | 2003-11-11 A | 2003-11-11 A | 100% | start no earlier than 2003-11-11 | SYSTEMS ANALYST [37.5%] | 3h | 3h | 135 | 135 |
| 35 | 1.1.4.2 | WRITE DISPLAY MODULE - GROUND |  | 0.88d? | 2003-11-18 A | 2003-11-18 A | 100% | finish no earlier than 2003-11-18 | COMPUTER PROGRAMMER | 7h | 7h | 280 | 280 |
| 36 | 1.1.4.3 | WRITE DISPLAY MODULE - GROUND |  | 1d? | 2003-11-19 A | 2003-11-19 A | 100% | start no earlier than 2003-11-19 | COMPUTER PROGRAMMER | 8h | 8h | 320 | 320 |
| 37 | 1.1.4.4 | ATTEND CLASS 11/19/2003 |  | 1d? | 2003-11-19 A | 2003-11-19 A | 100% | start no earlier than 2003-11-19 | SYSTEMS ANALYST [37.5%] | 3h | 3h | 135 | 135 |
| 38 | 1.1.4.5 | WRITE DISPLAY MODULE - OBJECTS |  | 0.5d? | 2003-11-20 A | 2003-11-20 A | 100% | finish no earlier than 2003-11-20 | COMPUTER PROGRAMMER | 4h | 4h | 160 | 160 |
| 39 | 1.1.4.6 | WRITE DISPLAY MODULE - OBJECTS |  | 1d? | 2003-11-21 A | 2003-11-21 A | 100% | start no earlier than 2003-11-21 | COMPUTER PROGRAMMER | 8h | 8h | 320 | 320 |
| 40 | 1.1.4.7 | WRITE DISPLAY MODULE - OBJECTS |  | 1d? | 2003-11-24 A | 2003-11-24 A | 100% | start no earlier than 2003-11-22 | COMPUTER PROGRAMMER | 8h | 8h | 320 | 320 |
| 41 | 1.1.4.8 | WRITE DISPLAY MODULE - OBJECTS |  | 1d? | 2003-11-25 A | 2003-11-25 A | 100% | finish no earlier than 2003-11-25 | COMPUTER PROGRAMMER | 8h | 8h | 320 | 320 |
| 42 | 1.1.4.9 | TEST DISPLAY MODULE |  | 1.5d? | 2003-11-26 A | 2003-11-27 A | 100% | start no earlier than 2003-11-26 | TEST PROGRAMMER | 12h | 12h | 420 | 420 |
| 43 | 1.1.4.10 | TEST DISPLAY MODULE |  | 1d? | 2003-11-27 A | 2003-11-27 A | 100% | start no earlier than 2003-11-27 | TEST PROGRAMMER | 8h | 8h | 280 | 280 |
| 44 | 1.1.4.11 | TEST DISPLAY MODULE |  | 1d? | 2003-11-28 A | 2003-11-28 A | 100% | finish no earlier than 2003-11-28 | TEST PROGRAMMER | 8h | 8h | 280 | 280 |
| 45 | 1.1.4.12 | PREPARE FDR |  | 1.5d? | 2003-11-28 A | 2003-12-01 A | 100% | finish no earlier than 2003-12-01 | TECHNICAL WRITER | 12h | 12h | 420 | 420 |
| 46 | 1.1.4.13 | PREPARE FDR |  | 1d? | 2003-12-02 A | 2003-12-02 A | 100% | start no earlier than 2003-12-02 | TECHNICAL WRITER | 8h | 8h | 280 | 280 |
| 47 | 1.1.4.14 | PREPARE FDR |  | 1d? | 2003-12-03 A | 2003-12-03 A | 100% | finish no earlier than 2003-12-03 | TECHNICAL WRITER | 8h | 8h | 280 | 280 |
| 48 | 1.1.4.15 | PRESENT FDR |  | 0.38d? | 2003-12-03 A | 2003-12-03 A | 100% | start no earlier than 2003-12-03 | SYSTEMS ANALYST | 3h | 3h | 135 | 135 |
| 49 | 1.1.4.16 | FDR | milestone | 0d | 2003-12-03 A | 2003-12-03 A | 100% | start no earlier than 2003-12-03 |  |  |  |  |  |

| ID | WBS | Task | Type | Duration | Start | Finish | Total slack | Constraint | Resources | Work | Cost |
| --- | --- | --- | --- | --- | --- | --- | --- | --- | --- | --- | --- |
| 50 | 1.2 | **WINTER BREAK** |  | 21.88d? | 2003-12-16 | 2004-01-14 | 71.38d |  |  | 74h | 2,890 |
| 51 | 1.2.1 | **BUILD & TEST PHASE 1 (WINTER BREAK)** |  | 21.88d? | 2003-12-16 | 2004-01-14 | 71.38d |  |  | 74h | 2,890 |
| 52 | 1.2.1.1 | WRITE DISPLAY MODULE - OBJECTS |  | 0.88d? | 2003-12-16 | 2003-12-16 | 97.38d | finish no earlier than 2003-12-16 | COMPUTER PROGRAMMER | 7h | 280 |
| 53 | 1.2.1.2 | WRITE DISPLAY MODULE - NPC |  | 1d? | 2003-12-19 | 2003-12-19 | 94.38d | finish no earlier than 2003-12-19 | COMPUTER PROGRAMMER | 8h | 320 |
| 54 | 1.2.1.3 | WRITE DISPLAY MODULE - INTERFACE |  | 1.38d? | 2003-12-22 | 2003-12-23 | 93d | start no earlier than 2003-12-22 | COMPUTER PROGRAMMER | 11h | 440 |
| 55 | 1.2.1.4 | WRITE DISPLAY MODULE - INTERFACE |  | 1d? | 2003-12-26 | 2003-12-26 | 89.38d | finish no earlier than 2003-12-26 | COMPUTER PROGRAMMER | 8h | 320 |
| 56 | 1.2.1.5 | TEST DISPLAY MODULE |  | 1d? | 2003-12-26 | 2003-12-26 | 89.38d | finish no earlier than 2003-12-26 | TEST PROGRAMMER | 8h | 280 |
| 57 | 1.2.1.6 | WRITE INTERFACE MODULE |  | 1.25d? | 2003-12-30 | 2003-12-31 | 86.38d | finish no earlier than 2003-12-31 | COMPUTER PROGRAMMER | 10h | 400 |
| 58 | 1.2.1.7 | WRITE INTERFACE MODULE |  | 1.25d? | 2004-01-02 | 2004-01-05 | 83.38d | finish no earlier than 2004-01-05 | COMPUTER PROGRAMMER | 10h | 400 |
| 59 | 1.2.1.8 | TEST INTERFACE MODULE |  | 0.75d? | 2004-01-09 | 2004-01-09 | 79.62d | start no earlier than 2004-01-09 | TEST PROGRAMMER | 6h | 210 |
| 60 | 1.2.1.9 | INTEGRATE DISPLAY AND INTERFACE MODULES |  | 1.5d? | 2004-01-13 | 2004-01-14 | 76.38d | finish no earlier than 2004-01-14 | COMPUTER PROGRAMMER [50%] | 6h | 240 |
| 61 | 1.3 | **SPRING SEMESTER** |  | 72.38d? | 2004-01-14 | 2004-04-21 | 0d |  |  | 267h | 10,360 |
| 62 | 1.3.1 | **BUILD & TEST PHASE 1 (SPRING)** |  | 6d? | 2004-01-14 | 2004-01-21 | 66.38d |  |  | 48h | 1,825 |
| 63 | 1.3.1.1 | ATTEND CLASS 1/14/2004 |  | 1d? | 2004-01-14 | 2004-01-14 | 76.38d | finish no earlier than 2004-01-14 | SYSTEMS ANALYST [37.5%] | 3h | 135 |
| 64 | 1.3.1.2 | CREATE/MODIFY INTERFACE GRAPHICS |  | 1.2d? | 2004-01-14 | 2004-01-15 | 75.38d | finish no earlier than 2004-01-15 | COMPUTER PROGRAMMER [62.5%] | 6h | 240 |
| 65 | 1.3.1.3 | WRITE INTERFACE MODULE |  | 1d? | 2004-01-16 | 2004-01-16 | 74.38d | start no earlier than 2004-01-16 | COMPUTER PROGRAMMER [62.5%] | 5h | 200 |
| 66 | 1.3.1.4 | PREPARE P.R. #1 |  | 1.5d? | 2004-01-16 | 2004-01-19 | 73.38d | finish no earlier than 2004-01-19 | TECHNICAL WRITER | 12h | 420 |
| 67 | 1.3.1.5 | PREPARE P.R. #1 |  | 1d? | 2004-01-20 | 2004-01-20 | 72.38d | start no earlier than 2004-01-20 | TECHNICAL WRITER | 8h | 280 |
| 68 | 1.3.1.6 | PREPARE P.R. #1 |  | 1d? | 2004-01-21 | 2004-01-21 | 71.38d | finish no earlier than 2004-01-21 | TECHNICAL WRITER | 8h | 280 |
| 69 | 1.3.1.7 | P.R. #1 - DATE1 |  | 0.38d? | 2004-01-21 | 2004-01-21 | 72d | start no earlier than 2004-01-21 | SYSTEMS ANALYST | 3h | 135 |
| 70 | 1.3.1.8 | P.R. #1 - DATE2 |  | 0.38d? | 2004-01-21 | 2004-01-21 | 72d | start no earlier than 2004-01-21 | SYSTEMS ANALYST | 3h | 135 |
| 71 | 1.3.1.9 | P.R. #1 | milestone | 0d | 2004-01-21 | 2004-01-21 | 70.38d | start no earlier than 2004-01-21 |  |  |  |
| 72 | 1.3.2 | **BUILD AND TEST - PHASE 2** |  | 28.25d? | 2004-01-27 | 2004-03-03 | 34.38d |  |  | 129h | 5,080 |
| 73 | 1.3.2.1 | WRITE INTERFACE MODULE |  | 1.25d? | 2004-01-27 | 2004-01-28 | 66.38d | finish no earlier than 2004-01-28 | COMPUTER PROGRAMMER | 10h | 400 |
| 74 | 1.3.2.2 | ATTEND CLASS 1/28/2004 |  | 1d? | 2004-01-28 | 2004-01-28 | 66.38d | start no earlier than 2004-01-28 | SYSTEMS ANALYST [37.5%] | 3h | 135 |
| 75 | 1.3.2.3 | WRITE INTERFACE MODULE |  | 3d? | 2004-01-29 | 2004-02-02 | 63.38d | finish no earlier than 2004-02-02 | COMPUTER PROGRAMMER [37.5%] | 9h | 360 |
| 76 | 1.3.2.4 | WRITE INTERFACE MODULE |  | 3d? | 2004-02-02 | 2004-02-04 | 61.38d | start no earlier than 2004-02-02 | COMPUTER PROGRAMMER [37.5%] | 9h | 360 |
| 77 | 1.3.2.5 | ATTEND CLASS 2/4/2004 |  | 1d? | 2004-02-04 | 2004-02-04 | 61.38d | start no earlier than 2004-02-04 | SYSTEMS ANALYST [37.5%] | 3h | 135 |
| 78 | 1.3.2.6 | WRITE INTERFACE MODULE |  | 0.38d? | 2004-02-06 | 2004-02-08 | 59.38d | finish no earlier than 2004-02-08 | COMPUTER PROGRAMMER | 3h | 120 |
| 79 | 1.3.2.7 | INTEGRATE DISPLAY AND INTERFACE MODULES |  | 1d? | 2004-02-09 | 2004-02-09 | 58.38d | finish no earlier than 2004-02-09 | COMPUTER PROGRAMMER | 8h | 320 |
| 80 | 1.3.2.8 | INTEGRATE DISPLAY AND INTERFACE MODULES |  | 1d? | 2004-02-10 | 2004-02-10 | 57.38d | start no earlier than 2004-02-10 | COMPUTER PROGRAMMER | 8h | 320 |
| 81 | 1.3.2.9 | DEVELOP ADDITIONAL GRAPHICS CONTENT |  | 2d? | 2004-02-10 | 2004-02-11 | 56.38d | finish no earlier than 2004-02-11 | COMPUTER PROGRAMMER [62.5%] | 10h | 400 |
| 82 | 1.3.2.10 | ATTEND CLASS 2/11/2004 |  | 1d? | 2004-02-11 | 2004-02-11 | 56.38d | start no earlier than 2004-02-11 | SYSTEMS ANALYST [37.5%] | 3h | 135 |
| 83 | 1.3.2.11 | TEST DISPLAY AND INTERFACE MODULES |  | 1.75d? | 2004-02-12 | 2004-02-13 | 54.38d | finish no earlier than 2004-02-13 | TEST PROGRAMMER | 14h | 490 |
| 84 | 1.3.2.12 | PREPARE P.R. #2 |  | 1.88d? | 2004-02-16 | 2004-02-17 | 52.38d | finish no earlier than 2004-02-17 | TECHNICAL WRITER | 15h | 525 |
| 85 | 1.3.2.13 | PRESENT P.R. #2 |  | 0.38d? | 2004-02-18 | 2004-02-18 | 52d | start no earlier than 2004-02-18 | SYSTEMS ANALYST | 3h | 135 |
| 86 | 1.3.2.14 | P.R. #2 | milestone | 0d | 2004-02-18 | 2004-02-18 | 50.38d | start no earlier than 2004-02-18 |  |  |  |
| 87 | 1.3.2.15 | ATTEND CLASS 2/25/2003 |  | 1d? | 2004-02-25 | 2004-02-25 | 46.38d | start no earlier than 2004-02-25 | SYSTEMS ANALYST [37.5%] | 3h | 135 |
| 88 | 1.3.2.16 | WRITE SIMULATION MODULE |  | 1.88d? | 2004-02-28 | 2004-02-29 | 42.5d | start no earlier than 2004-02-28 | COMPUTER PROGRAMMER | 15h | 600 |
| 89 | 1.3.2.17 | WRITE SIMULATION MODULE |  | 1d? | 2004-03-01 | 2004-03-01 | 41.38d | start no earlier than 2004-03-01 | COMPUTER PROGRAMMER [62.5%] | 5h | 200 |
| 90 | 1.3.2.18 | PREPARE P.R. #3 |  | 1d? | 2004-03-02 | 2004-03-02 | 40.38d | finish no earlier than 2004-03-02 | TECHNICAL WRITER [62.5%] | 5h | 175 |
| 91 | 1.3.2.19 | PRESENT P.R. #3 |  | 1d? | 2004-03-03 | 2004-03-03 | 39.38d | start no earlier than 2004-03-03 | SYSTEMS ANALYST [37.5%] | 3h | 135 |
| 92 | 1.3.2.20 | P.R. #3 | milestone | 0d? | 2004-03-03 | 2004-03-03 | 40.38d | start no earlier than 2004-03-03 | SYSTEMS ANALYST [37.5%] |  |  |

| ID | WBS | Task | Type | Duration | Start | Finish | Total slack | Constraint | Resources | Work | Cost |
| --- | --- | --- | --- | --- | --- | --- | --- | --- | --- | --- | --- |
| 93 | 1.3.3 | **TEST, INTEGRATE & DOCUMENT PHASE** |  | 6d? | 2004-03-17 | 2004-03-24 | 19.38d |  |  | 45h | 1,745 |
| 94 | 1.3.3.1 | WRITE SIMULATION MODULE |  | 1.62d? | 2004-03-17 | 2004-03-18 | 23.75d | start no earlier than 2004-03-17 | COMPUTER PROGRAMMER | 13h | 520 |
| 95 | 1.3.3.2 | TEST SIMULATION MODULE |  | 1.38d? | 2004-03-19 | 2004-03-22 | 22d | start no earlier than 2004-03-19 | TEST PROGRAMMER | 11h | 385 |
| 96 | 1.3.3.3 | INTEGRATE SIMULATION MODULE |  | 1.88d? | 2004-03-22 | 2004-03-23 | 25.5d | start no earlier than 2004-03-22 | COMPUTER PROGRAMMER | 15h | 600 |
| 97 | 1.3.3.4 | PREPARE P.R. #4 |  | 0.38d? | 2004-03-24 | 2004-03-24 | 24.38d | finish no earlier than 2004-03-24 | TECHNICAL WRITER | 3h | 105 |
| 98 | 1.3.3.5 | PRESENT P.R. #4 |  | 0.38d? | 2004-03-24 | 2004-03-24 | 25d | start no earlier than 2004-03-24 | SYSTEMS ANALYST | 3h | 135 |
| 99 | 1.3.3.6 | P.R. #4 | milestone | 0d | 2004-03-24 | 2004-03-24 | 25.38d | start no earlier than 2004-03-24 |  |  |  |
| 100 | 1.3.4 | **FINAL REVIEW PHASE** |  | 17.5d? | 2004-03-26 | 2004-04-21 | 0d |  |  | 45h | 1,710 |
| 101 | 1.3.4.1 | FINAL INTEGRATION / CLEAN UP |  | 1.12d? | 2004-03-26 | 2004-03-29 | 16.38d | finish no earlier than 2004-03-29 | COMPUTER PROGRAMMER | 9h | 360 |
| 102 | 1.3.4.2 | ATTEND CLASS 3/31/2004 |  | 1d? | 2004-03-31 | 2004-03-31 | 19.38d | start no earlier than 2004-03-31 | SYSTEMS ANALYST [37.5%] | 3h | 135 |
| 103 | 1.3.4.3 | WRITE USER MANUAL |  | 1d? | 2004-04-05 | 2004-04-05 | 11.38d | start no earlier than 2004-04-05 | TECHNICAL WRITER | 8h | 280 |
| 104 | 1.3.4.4 | COLLECT CODE DOCUMENTATION |  | 0.5d? | 2004-04-08 | 2004-04-08 | 8.38d | finish no earlier than 2004-04-08 | TECHNICAL WRITER | 4h | 140 |
| 105 | 1.3.4.5 | PERFORM FINAL SYSTEM TEST |  | 0.88d? | 2004-04-09 | 2004-04-09 | 7.5d | start no earlier than 2004-04-09 | TEST PROGRAMMER | 7h | 245 |
| 106 | 1.3.4.6 | ATTEND CLASS 4/14/2004 |  | 0.38d? | 2004-04-14 | 2004-04-14 | 5d | start no earlier than 2004-04-14 | SYSTEMS ANALYST | 3h | 135 |
| 107 | 1.3.4.7 | PREPARE FINAL REPORT |  | 1d? | 2004-04-19 | 2004-04-19 | 1.38d | finish no earlier than 2004-04-19 | TECHNICAL WRITER | 8h | 280 |
| 108 | 1.3.4.8 | PRESENT FINAL REVIEW |  | 0.38d? | 2004-04-21 | 2004-04-21 | 0d | start no earlier than 2004-04-21 | SYSTEMS ANALYST | 3h | 135 |
| 109 | 1.3.4.9 | FINAL REVIEW | milestone | 0d | 2004-04-21 | 2004-04-21 | 0.38d | start no earlier than 2004-04-21 |  |  |  |
